Schedule from MS Project, 2026-08-10 to 2026-10-15, costs in ₹, A marks actual dates.

## Calendars

- Standard: Mon-Fri 08:00-12:00, 13:00-17:00; Sat-Sun off.

## Resources

| Resource | Unit | Rate |
| --- | --- | --- |
| Site Engineer |  | 800 |
| Mechanical Fitter |  | 600 |
| Helper |  | 400 |
| Welder |  | 500 |
| Technician |  | 600 |
| Air Compressoor | Each | 150000 |
| Air Receiver Tank | Each | 60000 |
| Air Dryer | Each | 80000 |
| Air Filter | Each | 15000 |
| Air Pipe | Meter | 500 |
| Isolation Valve | Each | 2000 |
| Pressure Gauge | Each | 1500 |
| Pipe Support | Each | 1000 |
| Welding Electrode | kg | 300 |

## Schedule

| ID | WBS | Task | Duration | Start | Finish | Predecessors | Complete | Remaining | Baseline start | Baseline finish | Baseline duration | Total slack | Free slack | Resources | Work | Actual work | Cost | Baseline cost | Actual cost |
| --- | --- | --- | --- | --- | --- | --- | --- | --- | --- | --- | --- | --- | --- | --- | --- | --- | --- | --- | --- |
| 2 | 1 | **Project Planning** | 3d | 2026-08-10 A | 2026-08-12 |  | 67% | 1d | 2026-08-10 | 2026-08-12 | 3d | 0.25d |  |  | 24h | 16h | 19,200 | 19,200 | 12,800 |
| 3 | 1.1 | Project Scope Definition | 1d | 2026-08-10 A | 2026-08-10 A |  | 100% |  | 2026-08-10 | 2026-08-10 | 1d |  |  | Site Engineer | 8h | 8h | 6,400 | 6,400 | 6,400 |
| 4 | 1.2 | BOQ | 2d | 2026-08-11 A | 2026-08-12 | 3 | 50% | 1d | 2026-08-11 | 2026-08-12 | 2d | 0.25d | 0d | Site Engineer | 16h | 8h | 12,800 | 12,800 | 6,400 |
| 5 | 2 | **Procurement** | 4d | 2026-08-13 A | 2026-08-18 |  | 56% | 1.75d | 2026-08-13 | 2026-08-18 | 4d | 42d |  |  | 32h | 18h | 25,600 | 25,600 | 14,400 |
| 6 | 2.1 | Material Recquirement | 1d | 2026-08-13 A | 2026-08-13 | 4 | 25% | 0.75d | 2026-08-13 | 2026-08-13 | 1d | 1d | 0d | Site Engineer | 8h | 2h | 6,400 | 6,400 | 1,600 |
| 7 | 2.2 | Vendor Selection | 2d | 2026-08-14 A | 2026-08-17 | 6 | 50% | 1d | 2026-08-14 | 2026-08-17 | 2d | 43d |  | Site Engineer | 16h | 8h | 12,800 | 12,800 | 6,400 |
| 8 | 2.3 | Purchase order | 1d | 2026-08-18 A | 2026-08-18 A | 7 | 100% |  | 2026-08-18 | 2026-08-18 | 1d |  |  | Site Engineer | 8h | 8h | 6,400 | 6,400 | 6,400 |
| 9 | 3 | **Material Receiving** | 6d? | 2026-08-19 A | 2026-08-26 |  | 67% | 2d? | 2026-08-19 | 2026-08-26 | 6d? | 36d |  |  | 48h | 32h | 20,800 | 20,800 | 13,600 |
| 10 | 3.1 | Material Delevery | 3d | 2026-08-19 A | 2026-08-21 | 8 | 50% | 1.5d | 2026-08-19 | 2026-08-21 | 3d | 39d |  | Helper | 24h | 12h | 9,600 | 9,600 | 4,800 |
| 11 | 3.2 | Quantity Verification | 1d | 2026-08-24 A | 2026-08-24 A | 10 | 100% |  | 2026-08-24 | 2026-08-24 | 1d |  |  | Helper | 8h | 8h | 3,200 | 3,200 | 3,200 |
| 12 | 3.3 | Material Inspection | 1d | 2026-08-25 A | 2026-08-25 | 11 | 50% | 0.5d | 2026-08-25 | 2026-08-25 | 1d | 37d |  | Technician | 8h | 4h | 4,800 | 4,800 | 2,400 |
| 13 | 3.4 | Material storage | 1d? | 2026-08-26 A | 2026-08-26 A | 12 | 100% |  | 2026-08-26 | 2026-08-26 | 1d? |  |  | Helper | 8h | 8h | 3,200 | 3,200 | 3,200 |
| 14 | 4 | **Site Preparation** | 4d | 2026-08-10 A | 2026-08-13 |  | 75% | 1d | 2026-08-10 | 2026-08-26 | 13d | 9d |  |  | 32h | 24h | 19,200 | 19,200 | 14,400 |
| 15 | 4.1 | Area Cleaning | 1d | 2026-08-10 A | 2026-08-10 A |  | 100% |  | 2026-08-10 | 2026-08-10 | 1d |  |  | Helper | 8h | 8h | 3,200 | 3,200 | 3,200 |
| 16 | 4.2 | Installation Area check | 1d | 2026-08-11 A | 2026-08-11 A | 15 | 100% |  | 2026-08-19 | 2026-08-19 | 1d |  |  | Site Engineer | 8h | 8h | 6,400 | 6,400 | 6,400 |
| 17 | 4.3 | Tools & Equipment Arrangement | 1d | 2026-08-12 A | 2026-08-12 | 16 | 50% | 0.5d | 2026-08-25 | 2026-08-25 | 1d | 0.5d | 0d | Helper | 8h | 4h | 3,200 | 3,200 | 1,600 |
| 18 | 4.4 | Safety Arrangement | 1d | 2026-08-13 A | 2026-08-13 | 17 | 50% | 0.5d | 2026-08-26 | 2026-08-26 | 1d | 9d |  | Site Engineer | 8h | 4h | 6,400 | 6,400 | 3,200 |
| 19 | 5 | **Equipment Installation** | 5d | 2026-08-27 | 2026-09-02 |  |  |  | 2026-08-27 | 2026-09-02 | 5d | 0d |  |  | 72h |  | 348,200 | 348,200 |  |
| 20 | 5.1 | Air Compressor Installation | 2d | 2026-08-27 | 2026-08-28 | 18, 13 |  |  | 2026-08-27 | 2026-08-28 | 2d | 0d |  | Technician; Mechanical Fitter; Air Compressoor [1 Each] | 32h |  | 169,200 | 169,200 |  |
| 21 | 5.2 | Air Receiver Tank Installation | 1d | 2026-08-31 | 2026-08-31 | 20 |  |  | 2026-08-31 | 2026-08-31 | 1d | 0d |  | Mechanical Fitter; Air Receiver Tank [1 Each] | 8h |  | 64,800 | 64,800 |  |
| 22 | 5.3 | Air Dryer Installation | 1d | 2026-09-01 | 2026-09-01 | 21 |  |  | 2026-09-01 | 2026-09-01 | 1d | 0d |  | Mechanical Fitter; Technician; Air Dryer [1 Each] | 16h |  | 89,600 | 89,600 |  |
| 23 | 5.4 | Air Filter Installation | 1d | 2026-09-02 | 2026-09-02 | 22 |  |  | 2026-09-02 | 2026-09-02 | 1d | 0d |  | Mechanical Fitter; Technician; Air Filter [1 Each] | 16h |  | 24,600 | 24,600 |  |
| 24 | 6 | **Piping Installation** | 9d | 2026-09-03 | 2026-09-15 |  |  |  | 2026-09-03 | 2026-09-15 | 9d | 0d |  |  | 144h |  | 115,100 | 115,100 |  |
| 25 | 6.1 | Main Air Pipe Installation | 3d | 2026-09-03 | 2026-09-07 | 23 |  |  | 2026-09-03 | 2026-09-07 | 3d | 0d |  | Helper; Mechanical Fitter; Air Pipe [50 Meter] | 48h |  | 49,000 | 49,000 |  |
| 26 | 6.2 | Branch Air Pipe Installation | 3d | 2026-09-08 | 2026-09-10 | 25 |  |  | 2026-09-08 | 2026-09-10 | 3d | 0d |  | Helper; Mechanical Fitter; Air Pipe [30 Meter] | 48h |  | 39,000 | 39,000 |  |
| 27 | 6.3 | Pipe Jointing | 2d | 2026-09-11 | 2026-09-14 | 26 |  |  | 2026-09-11 | 2026-09-14 | 2d | 0d |  | Welder; Mechanical Fitter; Welding Electrode [5 kg] | 32h |  | 19,100 | 19,100 |  |
| 28 | 6.4 | Pipe Alignment | 1d | 2026-09-15 | 2026-09-15 | 27 |  |  | 2026-09-15 | 2026-09-15 | 1d | 0d |  | Helper; Mechanical Fitter | 16h |  | 8,000 | 8,000 |  |

| ID | WBS | Task | Duration | Start | Finish | Predecessors | Baseline start | Baseline finish | Baseline duration | Total slack | Resources | Work | Cost | Baseline cost |
| --- | --- | --- | --- | --- | --- | --- | --- | --- | --- | --- | --- | --- | --- | --- |
| 29 | 7 | **Valve & Instrument Installation** | 4d | 2026-09-16 | 2026-09-21 |  | 2026-09-16 | 2026-09-21 | 4d | 0d |  | 40h | 42,000 | 42,000 |
| 30 | 7.1 | Isolation Valve | 2d | 2026-09-16 | 2026-09-17 | 28 | 2026-09-16 | 2026-09-17 | 2d | 0d | Mechanical Fitter; Isolation Valve [6 Each] | 16h | 21,600 | 21,600 |
| 31 | 7.2 | Pressure Gauges Installationn | 1d | 2026-09-18 | 2026-09-18 | 30 | 2026-09-18 | 2026-09-18 | 1d | 0d | Mechanical Fitter; Technician; Pressure Gauge [4 Each] | 16h | 15,600 | 15,600 |
| 32 | 7.3 | Connrction checking | 1d | 2026-09-21 | 2026-09-21 | 31 | 2026-09-21 | 2026-09-21 | 1d | 0d | Technician | 8h | 4,800 | 4,800 |
| 33 | 8 | **Pipe Support Installation** | 6d | 2026-09-22 | 2026-09-29 |  | 2026-09-22 | 2026-09-29 | 6d | 0d |  | 80h | 54,800 | 54,800 |
| 34 | 8.1 | Support location marking | 1d | 2026-09-22 | 2026-09-22 | 32 | 2026-09-22 | 2026-09-22 | 1d | 0d | Site Engineer | 8h | 6,400 | 6,400 |
| 35 | 8.2 | Support Fabrication | 2d | 2026-09-23 | 2026-09-24 | 34 | 2026-09-23 | 2026-09-24 | 2d | 0d | Mechanical Fitter; Welder; Pipe Support [10 Each] | 32h | 27,600 | 27,600 |
| 36 | 8.3 | Support Installation | 2d | 2026-09-25 | 2026-09-28 | 35 | 2026-09-25 | 2026-09-28 | 2d | 0d | Helper; Mechanical Fitter | 32h | 16,000 | 16,000 |
| 37 | 8.4 | Pipe Support Checking | 1d | 2026-09-29 | 2026-09-29 | 36 | 2026-09-29 | 2026-09-29 | 1d | 0d | Technician | 8h | 4,800 | 4,800 |
| 38 | 9 | **Testing** | 3d | 2026-09-30 | 2026-10-02 |  | 2026-09-30 | 2026-10-02 | 3d | 0d |  | 32h | 20,800 | 20,800 |
| 39 | 9.1 | Pressure Testing | 1d | 2026-09-30 | 2026-09-30 | 37 | 2026-09-30 | 2026-09-30 | 1d | 0d | Technician | 8h | 4,800 | 4,800 |
| 40 | 9.2 | Leakage checking | 1d | 2026-10-01 | 2026-10-01 | 39 | 2026-10-01 | 2026-10-01 | 1d | 0d | Technician | 8h | 4,800 | 4,800 |
| 41 | 9.3 | Test Result Verification | 1d | 2026-10-02 | 2026-10-02 | 40 | 2026-10-02 | 2026-10-02 | 1d | 0d | Site Engineer; Technician | 16h | 11,200 | 11,200 |
| 42 | 10 | **Commissioning** | 4d | 2026-10-05 | 2026-10-08 |  | 2026-10-05 | 2026-10-08 | 4d | 0d |  | 48h | 32,000 | 32,000 |
| 43 | 10.1 | Sytem start up | 1d | 2026-10-05 | 2026-10-05 | 41 | 2026-10-05 | 2026-10-05 | 1d | 0d | Site Engineer; Technician | 16h | 11,200 | 11,200 |
| 44 | 10.2 | Pressure Verification | 1d | 2026-10-06 | 2026-10-06 | 43 | 2026-10-06 | 2026-10-06 | 1d | 0d | Technician | 8h | 4,800 | 4,800 |
| 45 | 10.3 | Air Flow Checking | 1d | 2026-10-07 | 2026-10-07 | 44 | 2026-10-07 | 2026-10-07 | 1d | 0d | Technician | 8h | 4,800 | 4,800 |
| 46 | 10.4 | Equipment Performance check | 1d | 2026-10-08 | 2026-10-08 | 45 | 2026-10-08 | 2026-10-08 | 1d | 0d | Site Engineer; Technician | 16h | 11,200 | 11,200 |
| 47 | 11 | **Project Completion** | 5d | 2026-10-09 | 2026-10-15 |  | 2026-10-09 | 2026-10-15 | 5d | 0d |  | 48h | 36,800 | 36,800 |
| 48 | 11.1 | Final Inspection | 1d | 2026-10-09 | 2026-10-09 | 46 | 2026-10-09 | 2026-10-09 | 1d | 0d | Site Engineer | 8h | 6,400 | 6,400 |
| 49 | 11.2 | Punch Point checking | 1d | 2026-10-12 | 2026-10-12 | 48 | 2026-10-12 | 2026-10-12 | 1d | 0d | Mechanical Fitter; Site Engineer | 16h | 11,200 | 11,200 |
| 50 | 11.3 | Documentation | 2d | 2026-10-13 | 2026-10-14 | 49 | 2026-10-13 | 2026-10-14 | 2d | 0d | Site Engineer | 16h | 12,800 | 12,800 |
| 51 | 11.4 | Project Handover | 1d | 2026-10-15 | 2026-10-15 | 50 | 2026-10-15 | 2026-10-15 | 1d | 0d | Site Engineer | 8h | 6,400 | 6,400 |
